# Plantilla - Licitación obra eléctrica

Schedule from MS Project XML, 2027-01-04 to 2027-06-10.

## Calendars

- Estándar (L-V 8:00-17:00): Mon-Fri 08:00-12:00, 13:00-17:00; Sat-Sun off.

## Resources

| Resource |
| --- |
| Director de proyecto |
| Ingeniero diseñador |
| Ingeniero residente |
| Supervisor / tecnólogo |
| Cuadrilla electricistas |
| Cuadrilla obra civil |
| Administrador / compras |
| Profesional SST |
| Organismo de inspección RETIE |

## Schedule

| ID | WBS | Task | Type | Duration | Start | Finish | Predecessors | Resources |
| --- | --- | --- | --- | --- | --- | --- | --- | --- |
| 1 | 1 | **1. INICIO Y CONTRATACIÓN** |  | 8d | 2027-01-04 | 2027-01-13 |  |  |
| 2 | 1.1 | Adjudicación / firma del contrato | milestone | 0d | 2027-01-04 | 2027-01-04 |  | Director de proyecto |
| 3 | 1.2 | Expedición de pólizas y garantías |  | 5d | 2027-01-05 | 2027-01-11 | 2 | Administrador / compras |
| 4 | 1.3 | Acta de inicio | milestone | 0d | 2027-01-11 | 2027-01-11 | 3 | Director de proyecto |
| 5 | 1.4 | Reunión de arranque, plan de calidad y plan SST |  | 2d | 2027-01-12 | 2027-01-13 | 4 | Director de proyecto; Ingeniero residente; Profesional SST |
| 6 | 2 | **2. INGENIERÍA Y DISEÑO** |  | 29d | 2027-01-12 | 2027-02-19 |  |  |
| 7 | 2.1 | Visita técnica y levantamiento en sitio |  | 3d | 2027-01-12 | 2027-01-14 | 4 | Ingeniero diseñador; Ingeniero residente |
| 8 | 2.2 | Estudio y cuadro de cargas |  | 5d | 2027-01-15 | 2027-01-21 | 7 | Ingeniero diseñador |
| 9 | 2.3 | Cálculos: regulación, cortocircuito y coordinación de protecciones |  | 8d | 2027-01-22 | 2027-02-02 | 8 | Ingeniero diseñador |
| 10 | 2.4 | Diseño SPT y SIPRA (análisis de riesgo NTC 4552) |  | 5d | 2027-01-22 | 2027-01-28 | 8 | Ingeniero diseñador |
| 11 | 2.5 | Diseño de iluminación (RETILAP) |  | 5d | 2027-01-15 | 2027-01-21 | 7 | Ingeniero diseñador |
| 12 | 2.6 | Planos y memorias de cálculo |  | 8d | 2027-02-03 | 2027-02-12 | 9, 10, 11 | Ingeniero diseñador |
| 13 | 2.7 | Revisión y aprobación del diseño (cliente / interventoría) |  | 5d | 2027-02-15 | 2027-02-19 | 12 | Director de proyecto |
| 14 | 2.8 | HITO: Diseño aprobado | milestone | 0d | 2027-02-19 | 2027-02-19 | 13 |  |
| 15 | 3 | **3. TRÁMITES ANTE OPERADOR DE RED** |  | 46d | 2027-01-15 | 2027-03-19 |  |  |
| 16 | 3.1 | Solicitud de factibilidad / disponibilidad de punto de conexión |  | 15d | 2027-01-15 | 2027-02-04 | 7 | Ingeniero diseñador |
| 17 | 3.2 | Radicación y aprobación del proyecto ante el OR |  | 20d | 2027-02-22 | 2027-03-19 | 14, 16 | Ingeniero diseñador |
| 18 | 3.3 | HITO: Proyecto aprobado por el OR | milestone | 0d | 2027-03-19 | 2027-03-19 | 17 |  |
| 19 | 4 | **4. SUMINISTROS** |  | 45d | 2027-02-22 | 2027-04-23 |  |  |
| 20 | 4.1 | Cotización y orden de compra de materiales y equipos |  | 5d | 2027-02-22 | 2027-02-26 | 14 | Administrador / compras |
| 21 | 4.2 | Fabricación de tableros |  | 20d | 2027-03-01 | 2027-03-26 | 20 | Administrador / compras |
| 22 | 4.3 | Suministro de transformador y equipos de MT |  | 40d | 2027-03-01 | 2027-04-23 | 20 | Administrador / compras |
| 23 | 4.4 | Entrega de cable y materiales en obra |  | 10d | 2027-03-01 | 2027-03-12 | 20 | Administrador / compras |
| 24 | 4.5 | HITO: Equipos y materiales en obra | milestone | 0d | 2027-04-23 | 2027-04-23 | 21, 22, 23 |  |

Notes:
- 1: Código plantilla: F1
- 2: Código plantilla: ADJ
- 3: Código plantilla: POL
- 4: Código plantilla: ACT
- 5: Código plantilla: ARR
- 6: Código plantilla: F2
- 7: Código plantilla: LEV
- 8: Código plantilla: CAR
- 9: Código plantilla: CAL
- 10: Código plantilla: SPTD
- 11: Código plantilla: ILUD
- 12: Código plantilla: PLA
- 13: Código plantilla: REV
- 14: Código plantilla: DAP
- 15: Código plantilla: F3
- 16: Código plantilla: FAC
- 17: Código plantilla: ROR
- 18: Código plantilla: OROK
- 19: Código plantilla: F4
- 20: Código plantilla: COM
- 21: Código plantilla: TAB
- 22: Código plantilla: TRA
- 23: Código plantilla: MAT
- 24: Código plantilla: EQOK

| ID | WBS | Task | Type | Duration | Start | Finish | Predecessors | Resources |
| --- | --- | --- | --- | --- | --- | --- | --- | --- |
| 25 | 5 | **5. CONSTRUCCIÓN Y MONTAJE** |  | 80d | 2027-01-14 | 2027-05-05 |  |  |
| 26 | 5.1 | Instalación de campamento, cerramiento y señalización |  | 3d | 2027-01-14 | 2027-01-18 | 5 | Supervisor / tecnólogo; Cuadrilla obra civil |
| 27 | 5.2 | Obra civil: excavación, ductos y cajas de inspección |  | 15d | 2027-02-22 | 2027-03-12 | 14, 26 | Cuadrilla obra civil; Supervisor / tecnólogo |
| 28 | 5.3 | Construcción del sistema de puesta a tierra |  | 5d | 2027-03-15 | 2027-03-19 | 27 | Cuadrilla electricistas |
| 29 | 5.4 | Canalización interna (tubería, bandejas) |  | 15d | 2027-02-22 | 2027-03-12 | 14, 26 | Cuadrilla electricistas; Supervisor / tecnólogo |
| 30 | 5.5 | Tendido y conexionado de cables |  | 12d | 2027-03-15 | 2027-03-30 | 29, 23, 27 | Cuadrilla electricistas; Supervisor / tecnólogo |
| 31 | 5.6 | Montaje de tableros |  | 5d | 2027-03-29 | 2027-04-02 | 21, 29 | Cuadrilla electricistas |
| 32 | 5.7 | Montaje de subestación / transformador |  | 8d | 2027-04-26 | 2027-05-05 | 22, 28, 18 | Cuadrilla electricistas; Ingeniero residente |
| 33 | 5.8 | Instalación de luminarias, tomas y salidas |  | 10d | 2027-03-31 | 2027-04-13 | 30 | Cuadrilla electricistas |
| 34 | 5.9 | Instalación SIPRA (puntas captoras y bajantes) |  | 5d | 2027-03-22 | 2027-03-26 | 28 | Cuadrilla electricistas |
| 35 | 6 | **6. PRUEBAS Y PUESTA EN SERVICIO** |  | 29d | 2027-04-14 | 2027-05-24 |  |  |
| 36 | 6.1 | Pruebas BT: aislamiento, continuidad, polaridad y SPT |  | 4d | 2027-04-14 | 2027-04-19 | 30, 31, 34, 33 | Ingeniero residente; Cuadrilla electricistas |
| 37 | 6.2 | Pruebas de equipos de MT |  | 3d | 2027-05-06 | 2027-05-10 | 32 | Ingeniero residente |
| 38 | 6.3 | Solicitud y visita de energización del OR |  | 10d | 2027-05-11 | 2027-05-24 | 36, 37 | Ingeniero residente |
| 39 | 6.4 | HITO: Energización | milestone | 0d | 2027-05-24 | 2027-05-24 | 38 |  |
| 40 | 7 | **7. CERTIFICACIÓN** |  | 10d | 2027-05-25 | 2027-06-07 |  |  |
| 41 | 7.1 | Planos récord (as built) |  | 5d | 2027-05-25 | 2027-05-31 | 39 | Ingeniero diseñador |
| 42 | 7.2 | Inspección RETIE por organismo acreditado |  | 10d | 2027-05-25 | 2027-06-07 | 39 | Organismo de inspección RETIE; Ingeniero residente |
| 43 | 7.3 | Inspección RETILAP (si aplica) |  | 5d | 2027-05-25 | 2027-05-31 | 39 | Organismo de inspección RETIE; Ingeniero residente |
| 44 | 7.4 | HITO: Dictámenes de conformidad RETIE / RETILAP | milestone | 0d | 2027-06-07 | 2027-06-07 | 42, 43 |  |
| 45 | 8 | **8. ENTREGA Y CIERRE** |  | 13d | 2027-05-25 | 2027-06-10 |  |  |
| 46 | 8.1 | Capacitación al cliente y manuales de operación y mantenimiento |  | 2d | 2027-05-25 | 2027-05-26 | 39 | Ingeniero residente |
| 47 | 8.2 | Entrega de dossier: planos, certificados, garantías |  | 3d | 2027-06-08 | 2027-06-10 | 41, 44, 46 | Director de proyecto; Ingeniero residente |
| 48 | 8.3 | HITO: Acta de recibo final y liquidación | milestone | 0d | 2027-06-10 | 2027-06-10 | 47 | Director de proyecto |

Notes:
- 25: Código plantilla: F5
- 26: Código plantilla: CAM
- 27: Código plantilla: CIVO
- 28: Código plantilla: SPT
- 29: Código plantilla: CAN
- 30: Código plantilla: CAB
- 31: Código plantilla: MTAB
- 32: Código plantilla: MSUB
- 33: Código plantilla: LUM
- 34: Código plantilla: SIP
- 35: Código plantilla: F6
- 36: Código plantilla: PBT
- 37: Código plantilla: PMT
- 38: Código plantilla: ENE
- 39: Código plantilla: ENOK
- 40: Código plantilla: F7
- 41: Código plantilla: ASB
- 42: Código plantilla: IRE
- 43: Código plantilla: IRL
- 44: Código plantilla: CERT
- 45: Código plantilla: F8
- 46: Código plantilla: CAP
- 47: Código plantilla: DOS
- 48: Código plantilla: FIN
